How a schedule from GanttProject changed from version to version. A marks actual dates.

## Version 1 (saved 2017-10-16)

| ID | WBS | Task | Duration | Start | Finish | Predecessors | Complete |
| --- | --- | --- | --- | --- | --- | --- | --- |
| 1 | 1 | **Volet: opération** | 80d | 2017-09-18 | 2018-01-10 |  | 28% |
| 2 |  | Version 1.0 des outils pour la collecte et mise à jour des données complétés | 0d | 2017-11-15 | 2017-11-15 |  |  |
| 3 | 1.2 | **Données climatiques** | 67d | 2017-09-18 | 2017-12-20 |  | 8% |
| 4 | 1.2.1 | **Production d'une première version des données traitées** | 4d | 2017-09-18 | 2017-09-21 |  | 100% |
| 5 |  | Télécharger les donnnées | 1d | 2017-09-18 | 2017-09-18 |  | 100% |
| 6 |  | Combler les données manquantes | 3d | 2017-09-19 | 2017-09-21 | 5 | 100% |
| 7 | 1.2.2 | **Améliorer l'outil pour télécharger les données météo** | 15d | 2017-10-23 | 2017-11-10 |  |  |
| 8 |  | Modifier l'outil de recherche des stations dans GWHAT | 3d | 2017-10-23 | 2017-10-25 |  |  |
| 9 |  | Compléter la doc de GWHAT | 2d | 2017-10-26 | 2017-10-27 | 8 |  |
| 10 |  | Évaluer les options pour la diffusion des travaux | 10d | 2017-10-30 | 2017-11-10 | 9 |  |
| 11 | 1.2.3 | **Améliorer l'estimation des données manquantes** | 25d | 2017-10-30 | 2017-12-01 |  |  |
| 12 |  | Réviser la sélection des stations | 1d | 2017-10-30 | 2017-10-30 |  |  |
| 13 |  | Lecture Pal et Prakash (2017) | 7d | 2017-10-30 | 2017-11-07 |  |  |
| 14 |  | Utiliser le machine learning pour combler les données | 5d | 2017-11-01 | 2017-11-07 |  |  |
| 15 |  | Compléter la doc de GWHAT | 10d | 2017-11-06 | 2017-11-17 |  |  |
| 16 |  | Écrire un article scientifique | 20d | 2017-11-06 | 2017-12-01 |  |  |
| 17 |  | Article: première version | 0d | 2017-12-01 | 2017-12-01 |  |  |
| 18 |  | Article: soumission revue | 0d | 2017-12-21 | 2017-12-21 |  |  |
| 19 | 1.3 | **Données piézométriques** | 75d | 2017-09-25 | 2018-01-10 |  | 50% |
| 20 |  | Créer une API | 3d | 2017-09-25 | 2017-09-27 |  | 100% |
| 21 |  | Télécharger les données | 2d | 2017-09-28 | 2017-09-29 | 20 | 100% |
| 22 |  | Inclure l'API dans GWHAT | 3d | 2018-01-04 | 2018-01-08 |  |  |
| 23 |  | Mettre à jour la doc. de GWHAT | 2d | 2018-01-09 | 2018-01-10 | 22 |  |
| 24 | 1.4 | **Données hydrométriques** | 5d | 2017-10-16 | 2017-10-20 |  |  |
| 25 |  | Tutoriel SQLite pour Python | 2d | 2017-10-16 | 2017-10-17 |  |  |
| 26 |  | Créer une API pour lire HYDAT | 2d | 2017-10-18 | 2017-10-19 | 25 |  |
| 27 |  | Récupérer les données | 1d | 2017-10-20 | 2017-10-20 | 26 |  |
| 28 |  | Outils pour récupérer les données hydrométriques complétés | 0d | 2017-10-20 | 2017-10-20 |  |  |
| 29 | 2 | **Volet: caractérisation** | 122d | 2017-07-04 | 2017-12-22 |  |  |
| 30 |  | Lecture circulaire 1217 de l'USGS | 50d | 2017-10-16 | 2017-12-22 |  |  |
| 31 |  | Fonction de réponse barométrique | 5d | 2017-12-04 | 2017-12-08 |  |  |
| 32 |  | Déf. des conditions autour des puits | 1d | 2017-09-11 | 2017-09-11 |  |  |
| 33 |  | Classement des puits et leurs fonctions | 1d | 2017-09-11 | 2017-09-11 |  |  |
| 34 |  | Livrable: grille de classement des puits | 0d | 2017-07-04 | 2017-07-04 |  |  |
| 35 | 3 | **Volet: exploitation** | 10d | 2017-08-28 | 2017-09-11 |  |  |
| 36 |  | Estimation de la recharge | 1d | 2017-09-11 | 2017-09-11 |  |  |
| 37 |  | Détection des changements dans les tendances | 1d | 2017-09-11 | 2017-09-11 |  |  |
| 38 |  | Prévision des niveau d'eau | 1d | 2017-09-11 | 2017-09-11 |  |  |
| 39 |  | Lien avec les cours d'eau | 1d | 2017-09-11 | 2017-09-11 |  |  |
| 40 |  | Graph: normales mensuelles | 1d | 2017-08-28 | 2017-08-28 |  |  |
| 41 | 4 | **Volet: rationalisation** | 10d | 2017-08-28 | 2017-09-11 |  |  |
| 42 |  | Graph: nbr. de stations versus le temps | 1d | 2017-08-28 | 2017-08-28 |  |  |
| 43 |  | Graph: localisation puits vs météo | 1d | 2017-09-11 | 2017-09-11 |  |  |
| 44 | 5 | **Volet: diffusion** | 593d | 2017-09-11 | 2019-12-30 |  |  |
| 45 |  | Données traitées en format csv | 1d | 2017-09-11 | 2017-09-11 |  |  |
| 46 |  | Graph: hydrogramme et météo | 1d | 2017-09-11 | 2017-09-11 |  |  |
| 47 |  | Rapport: fin de projet | 0d | 2019-12-31 | 2019-12-31 |  |  |
| 48 | 6 | **Formation continue** | 5d | 2017-10-23 | 2017-10-27 |  |  |
| 49 |  | Lecture Klove et al. (2014) | 5d | 2017-10-23 | 2017-10-27 |  |  |

## Version 2 (saved 2017-10-21)

Note of the change: Update Gantt diagram

Last finish stays 2019-12-31. Complete tasks 4 → 8.

Added:

| ID | Task | Duration | Start | Finish |
| --- | --- | --- | --- | --- |
| 27 | Créer une API pour lire CEHQ | 1d | 2017-10-19 | 2017-10-19 |
| 51 | Lire le contenu du CEHQ | 1d | 2017-10-02 | 2017-10-02 |

Changed:

| ID | Task | Start | Finish | Duration | Complete | Predecessors |
| --- | --- | --- | --- | --- | --- | --- |
| 1 | **Volet: opération** |  |  |  | 28% → 31% |  |
| 24 | **Données hydrométriques** |  |  |  | 0% → 83% |  |
| 25 | Tutoriel SQLite pour Python |  | 2017-10-17 → 2017-10-16 (-1d) | 2d → 1d | 0% → 100% |  |
| 26 | Créer une API pour lire HYDAT | 2017-10-18 → 2017-10-17 (-1d) | 2017-10-19 → 2017-10-18 (-1d) |  | 0% → 100% |  |
| 28 | Récupérer les données |  |  |  | 0% → 100% | 26 → 26, 27 |
| 49 | **Formation continue** | 2017-10-23 → 2017-10-02 (-21d) |  | 5d → 19d |  |  |

## Version 3 (saved 2017-10-23)

Note of the change: Merge remote-tracking branch 'refs/remotes/origin/master' into improv_cehq_reader

Last finish stays 2019-12-31. Complete tasks 8 → 9.

Added:

| ID | Task | Duration | Start | Finish |
| --- | --- | --- | --- | --- |
| 2 | Réorganisation du répertoire rsesq-data | 1d | 2017-10-23 | 2017-10-23 |

Changed:

| ID | Task | Complete |
| --- | --- | --- |
| 1 | **Volet: opération** | 31% → 32% |

## Version 4 (saved 2017-10-25)

Note of the change: Update progress report

Last finish stays 2019-12-31. Complete tasks 9 → 12.

Added:

| ID | Task | Duration | Start | Finish | Predecessors |
| --- | --- | --- | --- | --- | --- |
| 11 | Améliorer l'API pour télécharger les données hydrométriques du CEHQ | 1d | 2017-10-23 | 2017-10-23 | 10 |
| 12 | Créer une API pour télécharger les données climatiques d'EC | 1d | 2017-10-23 | 2017-10-23 |  |
| 13 | Télécharger les données des stations climatiques actives du QC | 1d | 2017-10-24 | 2017-10-24 | 12 |
| 14 | Documenter l'API pour les données climatiques | 1d | 2017-10-25 | 2017-10-25 | 13 |
| 15 | **Affichage GIS des données et évaluation du réseau** | 8d | 2017-10-25 | 2017-11-03 |  |
| 17 | Associer des stations météos aux puits | 1d | 2017-10-25 | 2017-10-25 |  |
| 18 | Production d'une carte avec la localisation des stations | 2d | 2017-10-26 | 2017-10-27 |  |
| 19 | Déterminer les stations qui sont dans la zone d'étude | 3d | 2017-10-27 | 2017-10-31 |  |
| 20 | Graph: distance puits vs station climatique active | 1d | 2017-11-01 | 2017-11-01 |  |
| 22 | **Prédiction hydrométrique à partir des données piézométriques et climatiques** | 28d | 2017-10-25 | 2017-12-01 |  |
| 24 | Preuve de concept pour quelques puits | 28d | 2017-10-25 | 2017-12-01 |  |
| 28 | **Développement de GWHAT** | 46d | 2017-11-06 | 2018-01-10 |  |

Removed: 2 Réorganisation du répertoire rsesq-data; 3 Version 1.0 des outils pour la collecte et mise à jour des données complétés; 4 Données climatiques; 5 Production d'une première version des données traitées; 18 Article: première version; 19 Article: soumission revue; 30 Outils pour récupérer les données hydrométriques complétés

Changed:

| ID | Task | Start | Finish | Duration | Complete | Predecessors | Other |
| --- | --- | --- | --- | --- | --- | --- | --- |
| 1 | **Préparation des données hydrométriques, piézométriques et climatiques** |  | 2018-01-10 → 2017-10-25 (-77d) | 80d → 27d | 32% → 100% |  | was named Volet: opération |
| 2 | Télécharger les donnnées climatiques avec WHAT |  |  |  |  |  | was named Télécharger les donnnées |
| 3 | Combler les données climatiques manquantes avec WHAT |  |  |  |  |  | was named Combler les données manquantes |
| 4 | Créer une API pour télécharger les données piézo du MDDELCC |  |  |  |  |  | was named Créer une API |
| 5 | Télécharger les données piézo du MDDELCC |  |  |  |  |  | was named Télécharger les données |
| 6 | **Données hydrométriques** |  | 2017-10-20 → 2017-10-23 (+3d) | 5d → 6d | 83% → 100% |  |  |
| 8 | Créer une API pour lire la base de données hydrométriques HYDAT |  |  |  |  |  | was named Créer une API pour lire HYDAT |
| 9 | Créer une API pour télécharger les données hydrométriques du CEHQ |  |  |  |  |  | was named Créer une API pour lire CEHQ |
| 10 | Récupérer les données hydrométriques du CEHQ |  |  |  |  | 8, 9 → 9 | was named Récupérer les données |
| 16 | Graph: nbr. de stations versus le temps | 2017-08-28 → 2017-10-25 (+58d) | 2017-08-28 → 2017-10-25 (+58d) |  |  |  |  |
| 21 | Lecture circulaire 1217 de l'USGS | 2017-10-16 → 2017-10-25 (+9d) | 2017-12-22 → 2017-11-03 (-49d) | 50d → 8d |  |  |  |
| 23 | Lecture Pal et Prakash (2017) | 2017-10-30 → 2017-10-25 (-5d) | 2017-11-07 → 2017-11-03 (-4d) | 7d → 8d |  |  |  |
| 25 | **Combler les données climatiques manquantes avec du machine learning** | 2017-10-30 → 2017-11-13 (+14d) | 2017-12-01 → 2017-11-27 (-4d) | 25d → 11d |  |  | was named Améliorer l'estimation des données manquantes |
| 26 | Combler les données manquantes dans les stations actives | 2017-11-01 → 2017-11-13 (+12d) | 2017-11-07 → 2017-11-20 (+13d) | 5d → 6d |  |  | was named Utiliser le machine learning pour combler les données |
| 27 | Ajouter des stations non actives au besoin | 2017-10-30 → 2017-11-21 (+22d) | 2017-10-30 → 2017-11-27 (+28d) | 1d → 5d |  | none → 26 | was named Réviser la sélection des stations |
| 29 | **Données piézométriques** | 2017-09-25 → 2018-01-04 (+101d) |  | 75d → 5d | 50% → 0% |  |  |
| 34 | **Améliorer l'outil pour télécharger les données météo** | 2017-10-23 → 2017-11-20 (+28d) | 2017-11-10 → 2017-12-07 (+27d) | 15d → 14d |  |  |  |
| 35 | Modifier l'outil de recherche des stations dans GWHAT | 2017-10-23 → 2017-11-20 (+28d) | 2017-10-25 → 2017-11-21 (+27d) | 3d → 2d |  |  |  |
| 36 | Compléter la doc de GWHAT | 2017-10-26 → 2017-11-22 (+27d) | 2017-10-27 → 2017-11-23 (+27d) |  |  |  |  |
| 37 | Évaluer les options pour la diffusion des travaux | 2017-10-30 → 2017-11-24 (+25d) | 2017-11-10 → 2017-12-07 (+27d) |  |  |  |  |
| 38 | **Caractérisation des puits** |  | 2017-12-22 → 2017-12-08 (-14d) | 122d → 112d |  |  | was named Volet: caractérisation |
| 49 | **Volet: rationalisation** | 2017-08-28 → 2017-09-11 (+14d) |  | 10d → 1d |  |  |  |

## Version 5 (saved 2021-09-21)

Note of the change: Merge pull request #26 from cgq-qgc/annual_statistical_hydrograph

Last finish stays 2019-12-31. Complete tasks 12 → 13.

Changed:

| ID | Task | Complete |
| --- | --- | --- |
| 15 | **Affichage GIS des données et évaluation du réseau** | 0% → 6% |
| 16 | Graph: nbr. de stations versus le temps | 0% → 100% |
